Schedule from OmniPlan.
Project start 2018-08-27

## Resources

| Resource | Group |
| --- | --- |
| Resource 1 | staff |
| Equipment 1 | equipment |
| Material 1 | material |
| Group 1 | group |
| Resource 1 | staff |
| PM\SA\DEV\TEST | staff |
| DEV*2 | staff |
| DEV*2\ | staff |
| P\S\DJ\DF\T | staff |
| DJ*2\DF*1 | staff |
| dj | staff |
| dj*1 | staff |
| p\s\dj\df\t | staff |
| dj*2\df*1 | staff |
| dj*1\t*1 | staff |
| DJ*1 | staff |
| DJ*1\T*1 | staff |
| DJ*2\T*1 | staff |
| P\S\DJ1\DJ2\DF\T | staff |
| S\DJ1\DF | staff |
| DJ2 | staff |
| DJ2\T*1 | staff |
| S\DJ1\T*1 | staff |
| DJ3\T*1 | staff |
| S\DF | staff |
| DJ1 | staff |
| T | staff |
| S\DJ1 | staff |
| S | staff |
| 产品\开发1\开发2\开发3\前端\测试 | staff |
| 开发1 | staff |
| 开发2 | staff |
| 测试 | staff |
| 开发3 | staff |
| 开发1/开发2 | staff |
| 开发1/开发2/开发3/测试 | staff |
| 焱鑫业务 | staff |
| 产品/开发1/开发2/开发3/测试 | staff |
| 开发1/前端 | staff |
| D | staff |
| Q | staff |
| C | staff |
| Y | staff |
| 经纪 | staff |
| 付立建 | staff |
| 立建 | staff |
| 豪骞 | staff |
| 军昌 | staff |
| 张丹 | staff |

## Schedule

| ID | WBS | Task | Predecessors | Complete | Constraint | Resources | Work | Actual work |
| --- | --- | --- | --- | --- | --- | --- | --- | --- |
| 1 | 1 | 需求确认/资源准备 |  | 100% | start no earlier than 2018-10-18 |  | 12h | 12h |
| 2 | 2 | 项目搭建/系统DB设计 |  |  | start no earlier than 2018-10-19 |  | 8h |  |
| 3 | 3 | **系统开发** |  |  |  |  |  |  |
| 4 | 3.1 | **通用功能** |  |  | start no earlier than 2018-10-18 |  |  |  |
| 5 | 3.1.1 | 权限/安全 |  |  | start no earlier than 2018-10-19 | 豪骞 |  | 0h |
| 6 | 3.2 | **微信前置交互** |  |  |  |  |  |  |
| 7 | 3.2.1 | **资产方B端销售人员** |  |  | start no earlier than 2018-10-19 |  |  |  |
| 8 | 3.2.1.1 | 销售人员登陆 |  | 100% | start no earlier than 2018-10-19 | 军昌 | 8h | 8h |
| 9 | 3.2.1.2 | 修改密码 |  | 100% | start no earlier than 2018-10-29 | 军昌 | 4h | 4h |
| 10 | 3.2.1.3 | 信贷产品列表查询 | 8 | 100% |  | 军昌 | 4h | 4h |
| 11 | 3.2.1.4 | 产品列表查询 | 10 | 100% |  | 军昌 | 4h | 4h |
| 12 | 3.2.1.5 | 提交订单 |  | 100% |  | 张丹 | 20h | 20h |
| 13 | 3.2.1.6 | 添加车辆信息 |  | 100% | start no earlier than 2018-10-29 | 张丹 | 8h | 8h |
| 14 | 3.2.1.7 | 借款查询 | 12 | 100% |  | 张丹 | 4h | 4h |
| 15 | 3.2.2 | **C端借款人** |  |  |  |  |  |  |
| 16 | 3.2.2.1 | 客户授权/静默开户/登陆 | 11 | 100% |  | 军昌 | 8h | 8h |
| 17 | 3.2.2.2 | 借款查询 | 14 | 100% |  | 张丹 | 4h | 4h |
| 18 | 3.2.2.3 | 订单借款信息提交 | 17 | 100% |  | 张丹 | 20h | 20h |
| 19 | 3.2.2.4 | 订单借款附件上传 | 18 | 100% |  | 张丹 | 8h | 8h |
| 20 | 3.2.2.5 | 订单支付 | 19 | 100% |  | 张丹 | 8h | 8h |
| 21 | 3.3 | **运营后台** |  |  |  |  |  |  |
| 22 | 3.3.1 | **公共功能** |  |  |  |  |  |  |
| 23 | 3.3.1.1 | 用户登录 |  | 100% | start no earlier than 2018-10-19 | 豪骞 | 4h | 4h |
| 24 | 3.3.1.2 | 修改密码 | 23 | 100% |  | 豪骞 | 4h | 4h |

| ID | WBS | Task | Predecessors | Complete | Constraint | Resources | Work | Actual work |
| --- | --- | --- | --- | --- | --- | --- | --- | --- |
| 25 | 3.3.2 | **资产方** |  |  | start no earlier than 2018-10-22 |  |  |  |
| 26 | 3.3.2.1 | 经纪人管理（查询/新增/修改/启用/重置密码） | 24 | 100% | start no earlier than 2018-10-22 | 豪骞 | 8h | 8h |
| 27 | 3.3.2.2 | 商户管理（查询/新增/修改/启用） | 16 | 100% |  | 军昌 | 8h | 8h |
| 28 | 3.3.2.3 | 商品管理（查询/新增/修改/启用） |  | 100% |  | 豪骞 | 12h | 12h |
| 29 | 3.3.2.4 | 借款监控查询 | 28 | 100% |  | 豪骞 | 4h | 4h |
| 30 | 3.3.2.5 | 借款影像查看 | 29 | 100% |  | 豪骞 | 4h | 4h |
| 31 | 3.3.2.6 | 还款计划查询（未定） | 30 |  |  |  | 8h |  |
| 32 | 3.3.3 | **平台方** |  |  |  |  |  |  |
| 33 | 3.3.3.1 | 机构管理（查询/新增/修改/启用） | 31 | 100% |  | 豪骞 | 8h | 8h |
| 34 | 3.3.3.2 | 机构用户管理（查询/新增/修改/启用） | 33 | 100% |  | 豪骞 | 8h | 8h |
| 35 | 3.3.3.3 | 合作机构（查询/新增/修改/启用） |  | 100% | start no earlier than 2018-10-26 | 军昌 | 8h | 8h |
| 36 | 3.3.3.4 | 借款监控查询 | 34 | 100% |  | 豪骞 | 4h | 4h |
| 37 | 3.3.3.5 | 借款详情 | 36 | 100% |  | 豪骞 | 8h | 8h |
| 38 | 3.3.3.6 | 还款计划(未定) |  |  | start no earlier than 2018-10-31 |  | 8h |  |
| 39 | 4 | 集成测试 |  | 100% | start no earlier than 2018-10-31 |  | 24h | 24h |
| 40 | 5 | **V4.0需求补充(2018/11/2~2018/11/6) 3D** |  |  | start no earlier than 2018-11-01 |  |  |  |
| 41 | 5.1 | **CB端** |  |  | start no earlier than 2018-11-01 |  |  |  |
| 42 | 5.1.1 | 增加税费/服务费 |  | 100% | start no earlier than 2018-11-02 | 张丹 | 4h | 4h |
| 43 | 5.2 | **资金方** |  |  |  |  |  |  |
| 44 | 5.2.1 | 首付款确认(查询/确认) | 42 | 100% |  | 张丹 | 8h | 8h |
| 45 | 5.2.2 | 贷款审核(查询/确认) | 44 | 100% |  | 张丹 | 8h | 8h |
| 46 | 5.2.3 | 放款确认(查询/确认) |  | 100% | start no earlier than 2018-11-02 | 军昌 | 8h | 8h |
| 47 | 5.2.4 | 还款确认(查询/确认) | 46 | 100% |  | 军昌 | 8h | 8h |
| 48 | 5.2.5 | 退款管理(查询/确认) | 54 | 100% | start no earlier than 2018-11-05 | 立建 | 8h | 8h |
| 49 | 5.2.6 | 借款监控 |  | 100% | start no earlier than 2018-11-05 | 张丹 | 4h | 4h |
| 50 | 5.2.7 | 还款计划(未定) |  |  |  |  | 8h |  |
| 51 | 5.2.8 | 退保管理(未定) |  |  |  |  | 8h |  |

| ID | WBS | Task | Predecessors | Complete | Constraint | Resources | Work | Actual work |
| --- | --- | --- | --- | --- | --- | --- | --- | --- |
| 52 | 5.3 | **平台方** |  |  |  |  |  |  |
| 53 | 5.3.1 | 机构增加银行账号维护 |  | 100% | start no earlier than 2018-11-05 | 立建 | 4h | 4h |
| 54 | 5.3.2 | 查询资金方含银行账号查询（C端使用） | 53 | 100% |  | 立建 | 4h | 4h |
| 55 | 5.4 | **电子签章** |  |  |  |  |  |  |
| 56 | 5.4.1 | 个人认证（借款合同未提供！） |  |  |  | 豪骞 | 8h |  |
| 57 | 5.4.2 | 企业认证（借款合同未提供！） | 56 | 90% |  | 豪骞 | 8h | 7.2h |
| 58 | 5.4.3 | 签章（借款合同未提供！） | 57 | 90% |  | 豪骞 | 8h | 7.2h |
| 59 | 5.4.4 | 合同查询（借款合同未提供！） | 58 | 90% |  | 豪骞 | 4h | 3.6h |
| 60 | 5.4.5 | 借款合同(待定) |  |  | start no earlier than 2018-11-01 |  | 8h |  |
| 61 | 6 | 系统测试 |  |  | start no earlier than 2018-10-30 |  | 96h |  |
| 62 | 7 | UAT上线 | 61 |  | start no earlier than 2018-11-11 |  | 16h |  |
